| task_id | wbs_code | phase | task_name | task_description | owner_company | owner_type | country | region | planned_start | planned_end | duration_days | planned_cost | currency | criticality | status | data_origin | predecessor_ids | dependency_type | risk_tags | milestone | milestone_name |
| --- | --- | --- | --- | --- | --- | --- | --- | --- | --- | --- | --- | --- | --- | --- | --- | --- | --- | --- | --- | --- | --- |
| T001 | 1.1 | Project Initiation | Feasibility study | Techno-economic feasibility study for an overseas battery cell and module manufacturing complex. | BatteryCo | Project Owner | South Korea | Gyeonggi-do, South Korea (BatteryCo HQ, synthetic) | 2025-01-06 | 2025-02-05 | 30 | 300000 | USD | critical | planned | SYNTHETIC |  |  |  |  |  |
| T002 | 1.2 | Project Initiation | Site selection | Evaluate and select the Hungarian industrial site for the plant. | BatteryCo | Project Owner | Hungary | Northeast Hungary (synthetic site) | 2025-02-05 | 2025-03-22 | 45 | 250000 | USD | high | planned | SYNTHETIC | T001 | FS |  |  |  |
| T003 | 1.3 | Project Initiation | Project financing & insurance close | Close project financing package and construction-phase insurance. | BatteryCo | Project Owner | South Korea | Gyeonggi-do, South Korea (BatteryCo HQ, synthetic) | 2025-02-05 | 2025-03-27 | 50 | 100000 | USD | critical | planned | SYNTHETIC | T001 | FS |  |  |  |
| T004 | 1.4 | Project Initiation | Local partner / contractor selection | Select the EPC general contractor and local civil contractor. | BatteryCo | Project Owner | Hungary | Northeast Hungary (synthetic site) | 2025-02-05 | 2025-03-17 | 40 | 150000 | USD | low | planned | SYNTHETIC | T002 | SS |  |  |  |
| T005 | 1.5 | Project Initiation | Land acquisition | Acquire the selected industrial land parcel. | BatteryCo | Project Owner | Hungary | Northeast Hungary (synthetic site) | 2025-03-27 | 2025-05-26 | 60 | 8000000 | USD | critical | planned | SYNTHETIC | T002,T003 | FS | regulation | True | Land acquired |
| T006 | 2.1 | Regulation & Engineering | Environmental baseline survey | Baseline ecological and hydrological survey of the site. | Environmental Consultant | Consultant | Hungary | Northeast Hungary (synthetic site) | 2025-05-26 | 2025-06-30 | 35 | 120000 | USD | critical | planned | SYNTHETIC | T005 | FS | regulation |  |  |
| T007 | 2.2 | Regulation & Engineering | Environmental impact review | Formal environmental impact assessment submitted to the regulator. | Environmental Consultant | Consultant | Hungary | Northeast Hungary (synthetic site) | 2025-06-30 | 2025-08-29 | 60 | 200000 | USD | critical | planned | SYNTHETIC | T006 | FS | regulation, permitting |  |  |
| T008 | 2.3 | Regulation & Engineering | Environmental permit approval | Regulatory approval of the environmental permit. | Regulatory Authority | Regulatory Authority | Hungary | Northeast Hungary (synthetic site) | 2025-08-29 | 2025-10-13 | 45 | 80000 | USD | critical | planned | SYNTHETIC | T007 | FS | regulation, permitting | True | Environmental permit approved |
| T009 | 2.4 | Regulation & Engineering | Geotechnical survey | Soil and foundation-bearing capacity survey of the site. | Local Civil Contractor | Civil Contractor | Hungary | Northeast Hungary (synthetic site) | 2025-05-26 | 2025-06-20 | 25 | 90000 | USD | medium | planned | SYNTHETIC | T005 | FS |  |  |  |
| T010 | 2.5 | Regulation & Engineering | Utility agreement negotiation | Negotiate grid connection capacity and water supply agreement. | Utility Provider | Utility Provider | Hungary | Northeast Hungary (synthetic site) | 2025-05-26 | 2025-07-15 | 50 | 60000 | USD | low | planned | SYNTHETIC | T005 | FS | utility, regulation |  |  |
| T011 | 2.6 | Regulation & Engineering | Detailed engineering design | Detailed civil, structural, and MEP engineering design package. | Global EPC | EPC Contractor | Hungary | Northeast Hungary (synthetic site) | 2025-06-20 | 2025-09-18 | 90 | 1800000 | USD | medium | planned | SYNTHETIC | T009,T004 | FS |  |  |  |
| T012 | 2.7 | Regulation & Engineering | Construction permit application & approval | Submit and obtain the building/construction permit from the regulator. | Regulatory Authority | Regulatory Authority | Hungary | Northeast Hungary (synthetic site) | 2025-10-13 | 2025-12-22 | 70 | 100000 | USD | critical | planned | SYNTHETIC | T011,T008 | FS | regulation, permitting | True | Construction permit approved |
| T013 | 2.8 | Regulation & Engineering | Local regulatory approval | Final zoning and building-code sign-off from local authorities. | Regulatory Authority | Regulatory Authority | Hungary | Northeast Hungary (synthetic site) | 2025-12-22 | 2026-01-21 | 30 | 40000 | USD | low | planned | SYNTHETIC | T012 | FS | regulation, permitting |  |  |
| T014 | 3.1 | Procurement | Major equipment specification & vendor selection | Finalize process equipment specifications and select equipment vendors. | BatteryCo | Project Owner | South Korea | Gyeonggi-do, South Korea (BatteryCo HQ, synthetic) | 2025-06-20 | 2025-08-04 | 45 | 200000 | USD | low | planned | SYNTHETIC | T011 | SS |  |  |  |
| T015 | 3.2 | Procurement | Long-lead cell equipment order | Place order for long-lead cell production equipment (coating, winding, assembly). | Equipment Vendor A | Equipment Vendor | South Korea | Gyeonggi-do, South Korea (BatteryCo HQ, synthetic) | 2025-08-04 | 2025-09-03 | 30 | 15000000 | USD | low | planned | SYNTHETIC | T014 | FS | equipment, supply_chain | True | Long-lead equipment ordered |
| T016 | 3.3 | Procurement | Long-lead module/pack equipment order | Place order for long-lead module and pack assembly/automation equipment. | Equipment Vendor B | Equipment Vendor | Germany | Bavaria, Germany (Equipment Vendor B HQ, synthetic) | 2025-08-04 | 2025-09-03 | 30 | 12000000 | USD | low | planned | SYNTHETIC | T014 | FS | equipment, supply_chain |  |  |
| T017 | 3.4 | Procurement | Electrical equipment procurement | Procure transformers, switchgear, and electrical distribution equipment. | Global EPC | EPC Contractor | Hungary | Northeast Hungary (synthetic site) | 2026-01-21 | 2026-03-02 | 40 | 3000000 | USD | low | planned | SYNTHETIC | T013 | FS | equipment, supply_chain |  |  |
| T018 | 3.5 | Procurement | Mechanical/HVAC equipment procurement | Procure HVAC, compressed air, and mechanical utility equipment. | Global EPC | EPC Contractor | Hungary | Northeast Hungary (synthetic site) | 2026-01-21 | 2026-03-02 | 40 | 2500000 | USD | low | planned | SYNTHETIC | T013 | FS | equipment, supply_chain |  |  |
| T019 | 3.6 | Procurement | Construction material procurement | Procure structural steel, concrete, and building cladding materials. | Local Civil Contractor | Civil Contractor | Hungary | Northeast Hungary (synthetic site) | 2026-01-21 | 2026-02-25 | 35 | 4000000 | USD | low | planned | SYNTHETIC | T013 | FS | supply_chain, logistics |  |  |
| T020 | 3.7 | Procurement | Logistics & customs planning | Plan international shipping routes and pre-register customs documentation. | Logistics Partner | Logistics Provider | Hungary | Northeast Hungary (synthetic site) | 2025-08-04 | 2025-09-03 | 30 | 80000 | USD | low | planned | SYNTHETIC | T015,T016 | SS | logistics, customs |  |  |
| T021 | 4.1 | Site & Civil Construction | Site preparation & clearing | Clear vegetation, grade, and prepare the construction site. | Local Civil Contractor | Civil Contractor | Hungary | Northeast Hungary (synthetic site) | 2025-12-22 | 2026-01-31 | 40 | 900000 | USD | critical | planned | SYNTHETIC | T012 | FS | permitting, construction, regulation | True | Site cleared |
| T022 | 4.2 | Site & Civil Construction | Ground improvement / soil stabilization | Soil stabilization and compaction ahead of foundation work. | Local Civil Contractor | Civil Contractor | Hungary | Northeast Hungary (synthetic site) | 2026-01-31 | 2026-03-07 | 35 | 700000 | USD | critical | planned | SYNTHETIC | T021 | FS | construction, weather |  |  |
| T023 | 4.3 | Site & Civil Construction | Foundation & underground utility trenching | Pour foundations and trench for underground utility routing. | Local Civil Contractor | Civil Contractor | Hungary | Northeast Hungary (synthetic site) | 2026-03-07 | 2026-05-01 | 55 | 2200000 | USD | critical | planned | SYNTHETIC | T022 | FS | construction, weather, labor |  |  |
| T024 | 4.4 | Site & Civil Construction | Structural steel erection (go-vertical) | Erect the primary structural steel frame of the main building. | Global EPC | EPC Contractor | Hungary | Northeast Hungary (synthetic site) | 2026-05-01 | 2026-07-10 | 70 | 5500000 | USD | critical | planned | SYNTHETIC | T023 | FS | construction, labor, weather, supply_chain | True | Structure topped out (go-vertical) |
| T025 | 4.5 | Site & Civil Construction | Roofing & building enclosure | Install roofing and exterior wall cladding to fully enclose the building. | Local Civil Contractor | Civil Contractor | Hungary | Northeast Hungary (synthetic site) | 2026-07-10 | 2026-08-19 | 40 | 1800000 | USD | critical | planned | SYNTHETIC | T024 | FS | construction, weather | True | Building enclosed |
| T026 | 4.6 | Site & Civil Construction | Internal civil works | Interior flooring, partitions, and finishes. | Local Civil Contractor | Civil Contractor | Hungary | Northeast Hungary (synthetic site) | 2026-08-19 | 2026-10-03 | 45 | 1400000 | USD | high | planned | SYNTHETIC | T025 | FS | construction, labor |  |  |
| T027 | 4.7 | Site & Civil Construction | Site paving, fencing & security infrastructure | Exterior paving, perimeter fencing, and security infrastructure. | Local Civil Contractor | Civil Contractor | Hungary | Northeast Hungary (synthetic site) | 2026-05-01 | 2026-05-31 | 30 | 500000 | USD | low | planned | SYNTHETIC | T024 | SS | construction |  |  |
| T028 | 5.1 | Utilities & Facility | Grid connection construction | Build the medium-voltage grid connection line to the site. | Utility Provider | Utility Provider | Hungary | Northeast Hungary (synthetic site) | 2026-05-01 | 2026-06-30 | 60 | 2000000 | USD | low | planned | SYNTHETIC | T010,T023 | FS | utility, regulation |  |  |
| T029 | 5.2 | Utilities & Facility | Substation installation | Install and energize the on-site substation. | Utility Provider | Utility Provider | Hungary | Northeast Hungary (synthetic site) | 2026-06-30 | 2026-08-19 | 50 | 3500000 | USD | low | planned | SYNTHETIC | T028 | FS | utility, equipment | True | Substation energized |
| T030 | 5.3 | Utilities & Facility | Water supply connection | Connect municipal/industrial water supply to the site. | Utility Provider | Utility Provider | Hungary | Northeast Hungary (synthetic site) | 2026-05-01 | 2026-06-10 | 40 | 500000 | USD | low | planned | SYNTHETIC | T010,T023 | FS | utility |  |  |
| T031 | 5.4 | Utilities & Facility | Wastewater treatment system | Install on-site industrial wastewater treatment system. | Global EPC | EPC Contractor | Hungary | Northeast Hungary (synthetic site) | 2026-08-19 | 2026-10-03 | 45 | 900000 | USD | low | planned | SYNTHETIC | T025 | FS | utility, regulation |  |  |
| T032 | 5.5 | Utilities & Facility | HVAC installation | Install building HVAC and compressed dry-air systems. | Global EPC | EPC Contractor | Hungary | Northeast Hungary (synthetic site) | 2026-08-19 | 2026-10-08 | 50 | 2600000 | USD | critical | planned | SYNTHETIC | T025,T018 | FS | equipment, construction |  |  |
| T033 | 5.6 | Utilities & Facility | Fire protection system installation | Install fire suppression and detection systems. | Global EPC | EPC Contractor | Hungary | Northeast Hungary (synthetic site) | 2026-08-19 | 2026-09-23 | 35 | 1100000 | USD | low | planned | SYNTHETIC | T025 | FS | regulation, construction |  |  |
| T034 | 5.7 | Utilities & Facility | Clean/dry room infrastructure | Build the low-humidity dry room shell required for cell production. | Global EPC | EPC Contractor | Hungary | Northeast Hungary (synthetic site) | 2026-10-08 | 2026-12-02 | 55 | 4200000 | USD | critical | planned | SYNTHETIC | T026,T032 | FS | equipment, construction | True | Dry room enclosure completed |
| T035 | 5.8 | Utilities & Facility | Utility commissioning | Integrated test of grid, water, and HVAC systems together. | Global EPC | EPC Contractor | Hungary | Northeast Hungary (synthetic site) | 2026-10-08 | 2026-11-02 | 25 | 300000 | USD | low | planned | SYNTHETIC | T029,T030,T032,T033 | FS | utility |  |  |
| T036 | 6.1 | Manufacturing Equipment | Cell equipment manufacturing | Fabrication of cell production equipment at the vendor's home factory. | Equipment Vendor A | Equipment Vendor | South Korea | Gyeonggi-do, South Korea (BatteryCo HQ, synthetic) | 2025-09-03 | 2026-01-01 | 120 | 2000000 | USD | low | planned | SYNTHETIC | T015 | FS | equipment, supply_chain |  |  |
| T037 | 6.2 | Manufacturing Equipment | Module/pack equipment manufacturing | Fabrication of module and pack assembly equipment at the vendor's home factory. | Equipment Vendor B | Equipment Vendor | Germany | Bavaria, Germany (Equipment Vendor B HQ, synthetic) | 2025-09-03 | 2025-12-22 | 110 | 1800000 | USD | low | planned | SYNTHETIC | T016 | FS | equipment, supply_chain |  |  |
| T038 | 6.3 | Manufacturing Equipment | Factory acceptance test - cell equipment | FAT of cell production equipment at the vendor's facility. | Equipment Vendor A | Equipment Vendor | South Korea | Gyeonggi-do, South Korea (BatteryCo HQ, synthetic) | 2026-01-01 | 2026-01-21 | 20 | 150000 | USD | low | planned | SYNTHETIC | T036 | FS | equipment | True | Cell equipment FAT passed |
| T039 | 6.4 | Manufacturing Equipment | Factory acceptance test - module equipment | FAT of module/pack equipment at the vendor's facility. | Equipment Vendor B | Equipment Vendor | Germany | Bavaria, Germany (Equipment Vendor B HQ, synthetic) | 2025-12-22 | 2026-01-11 | 20 | 140000 | USD | low | planned | SYNTHETIC | T037 | FS | equipment |  |  |
| T040 | 6.5 | Manufacturing Equipment | International shipping - cell equipment | Ocean/inland freight of cell equipment from South Korea to Hungary. | Logistics Partner | Logistics Provider | Hungary | South Korea -> Hungary (in transit) | 2026-01-21 | 2026-02-25 | 35 | 800000 | USD | low | planned | SYNTHETIC | T038,T020 | FS | logistics, supply_chain |  |  |
| T041 | 6.6 | Manufacturing Equipment | International shipping - module equipment | Freight of module/pack equipment from Germany to Hungary. | Logistics Partner | Logistics Provider | Hungary | Germany -> Hungary (in transit) | 2026-01-11 | 2026-01-26 | 15 | 300000 | USD | low | planned | SYNTHETIC | T039,T020 | FS | logistics, supply_chain |  |  |
| T042 | 6.7 | Manufacturing Equipment | Customs clearance - cell equipment | Import customs clearance for cell equipment at the Hungarian border/port. | Logistics Partner | Logistics Provider | Hungary | Northeast Hungary (synthetic site) | 2026-02-25 | 2026-03-07 | 10 | 60000 | USD | low | planned | SYNTHETIC | T040 | FS | customs, logistics, regulation |  |  |
| T043 | 6.8 | Manufacturing Equipment | Customs clearance - module equipment | Import customs clearance for module/pack equipment. | Logistics Partner | Logistics Provider | Hungary | Northeast Hungary (synthetic site) | 2026-01-26 | 2026-02-03 | 8 | 40000 | USD | low | planned | SYNTHETIC | T041 | FS | customs, logistics, regulation |  |  |
| T044 | 6.9 | Manufacturing Equipment | Inland transportation to site | Inland trucking of cleared equipment from the border/port to the site. | Logistics Partner | Logistics Provider | Hungary | Northeast Hungary (synthetic site) | 2026-03-07 | 2026-03-12 | 5 | 50000 | USD | low | planned | SYNTHETIC | T042,T043 | FS | logistics |  |  |
| T045 | 6.10 | Manufacturing Equipment | Equipment delivery to site | Final delivery and site receiving of all manufacturing equipment. | Logistics Partner | Logistics Provider | Hungary | Northeast Hungary (synthetic site) | 2026-12-02 | 2026-12-05 | 3 | 30000 | USD | critical | planned | SYNTHETIC | T044,T034 | FS | logistics, equipment | True | Equipment delivered |
| T046 | 6.11 | Manufacturing Equipment | Equipment installation - cell line (mechanical) | Mechanical installation of cell production line equipment. | Equipment Vendor A | Equipment Vendor | Hungary | Northeast Hungary (synthetic site) | 2026-12-05 | 2027-01-19 | 45 | 1200000 | USD | critical | planned | SYNTHETIC | T045 | FS | equipment, labor |  |  |
| T047 | 6.12 | Manufacturing Equipment | Equipment installation - module/pack line (mechanical) | Mechanical installation of module/pack line equipment. | Equipment Vendor B | Equipment Vendor | Hungary | Northeast Hungary (synthetic site) | 2026-12-05 | 2027-01-09 | 35 | 900000 | USD | high | planned | SYNTHETIC | T045 | FS | equipment, labor |  |  |
| T048 | 6.13 | Manufacturing Equipment | Mechanical hookup | Process piping and gas-line hookup for both production lines. | Equipment Vendor A | Equipment Vendor | Hungary | Northeast Hungary (synthetic site) | 2027-01-19 | 2027-02-13 | 25 | 500000 | USD | critical | planned | SYNTHETIC | T046,T047 | FS | equipment, construction |  |  |
| T049 | 6.14 | Manufacturing Equipment | Electrical hookup | Electrical hookup of production equipment to plant power distribution. | Global EPC | EPC Contractor | Hungary | Northeast Hungary (synthetic site) | 2027-02-13 | 2027-03-10 | 25 | 700000 | USD | critical | planned | SYNTHETIC | T048,T035 | FS | equipment, utility, labor |  |  |
| T050 | 6.15 | Manufacturing Equipment | Automation & controls integration | Integrate line automation, MES, and controls systems. | Automation Integrator | Systems Integrator | Hungary | Northeast Hungary (synthetic site) | 2027-03-10 | 2027-04-09 | 30 | 1000000 | USD | critical | planned | SYNTHETIC | T049 | FS | equipment, labor |  |  |
| T051 | 6.16 | Manufacturing Equipment | Equipment calibration | Calibrate and pre-qualify installed equipment prior to commissioning. | Equipment Vendor A | Equipment Vendor | Hungary | Northeast Hungary (synthetic site) | 2027-04-09 | 2027-04-29 | 20 | 400000 | USD | critical | planned | SYNTHETIC | T050 | FS | equipment | True | Equipment installation complete |
| T052 | 7.1 | Commissioning | Facility inspection (pre-commissioning) | Joint EPC/regulator inspection ahead of formal commissioning. | Global EPC | EPC Contractor | Hungary | Northeast Hungary (synthetic site) | 2027-04-29 | 2027-05-14 | 15 | 80000 | USD | critical | planned | SYNTHETIC | T051 | FS | regulation |  |  |
| T053 | 7.2 | Commissioning | Equipment commissioning - cell line | Commission the cell production line with vendor support. | Equipment Vendor A | Equipment Vendor | Hungary | Northeast Hungary (synthetic site) | 2027-05-14 | 2027-06-13 | 30 | 600000 | USD | critical | planned | SYNTHETIC | T052 | FS | equipment, labor |  |  |
| T054 | 7.3 | Commissioning | Equipment commissioning - module/pack line | Commission the module/pack line with vendor support. | Equipment Vendor B | Equipment Vendor | Hungary | Northeast Hungary (synthetic site) | 2027-05-14 | 2027-06-08 | 25 | 500000 | USD | high | planned | SYNTHETIC | T052 | FS | equipment, labor |  |  |
| T055 | 7.4 | Commissioning | Integrated line testing | End-to-end integrated test from cell production through module/pack. | BatteryCo | Project Owner | Hungary | Northeast Hungary (synthetic site) | 2027-06-13 | 2027-07-08 | 25 | 450000 | USD | critical | planned | SYNTHETIC | T053,T054 | FS | equipment, labor |  |  |
| T056 | 7.5 | Commissioning | Safety inspection | Regulator safety inspection of the commissioned facility. | Regulatory Authority | Regulatory Authority | Hungary | Northeast Hungary (synthetic site) | 2027-07-08 | 2027-07-18 | 10 | 30000 | USD | critical | planned | SYNTHETIC | T055 | FS | regulation |  |  |
| T057 | 7.6 | Commissioning | Regulatory inspection & operating license approval | Final regulatory inspection and operating license issuance. | Regulatory Authority | Regulatory Authority | Hungary | Northeast Hungary (synthetic site) | 2027-07-18 | 2027-08-07 | 20 | 50000 | USD | critical | planned | SYNTHETIC | T056 | FS | regulation, permitting | True | Commissioning completed / operating license granted |
| T058 | 8.1 | Production Launch | Workforce recruitment & training | Recruit and train the production workforce. | Workforce Agency | Labor/HR Partner | Hungary | Northeast Hungary (synthetic site) | 2026-10-08 | 2026-12-07 | 60 | 700000 | USD | low | planned | SYNTHETIC | T034 | SS | labor |  |  |
| T059 | 8.2 | Production Launch | Trial production - cell line | Initial trial production runs on the cell line. | BatteryCo | Project Owner | Hungary | Northeast Hungary (synthetic site) | 2027-08-07 | 2027-09-06 | 30 | 900000 | USD | critical | planned | SYNTHETIC | T057,T058 | FS | labor, equipment, regulation | True | Trial production started |
| T060 | 8.3 | Production Launch | Trial production - module/pack line | Initial trial production runs on the module/pack line. | BatteryCo | Project Owner | Hungary | Northeast Hungary (synthetic site) | 2027-08-07 | 2027-09-01 | 25 | 700000 | USD | high | planned | SYNTHETIC | T057,T058 | FS | labor, equipment |  |  |
| T061 | 8.4 | Production Launch | Process qualification | Qualify the production process against quality specifications. | BatteryCo | Project Owner | Hungary | Northeast Hungary (synthetic site) | 2027-09-06 | 2027-10-01 | 25 | 400000 | USD | critical | planned | SYNTHETIC | T059,T060 | FS | equipment, labor |  |  |
| T062 | 8.5 | Production Launch | Yield stabilization | Stabilize production yield to target levels. | BatteryCo | Project Owner | Hungary | Northeast Hungary (synthetic site) | 2027-10-01 | 2027-11-05 | 35 | 500000 | USD | critical | planned | SYNTHETIC | T061 | FS | equipment, labor |  |  |
| T063 | 8.6 | Production Launch | Ramp-up to nameplate capacity | Ramp production volume up to nameplate capacity. | BatteryCo | Project Owner | Hungary | Northeast Hungary (synthetic site) | 2027-11-05 | 2027-12-20 | 45 | 1200000 | USD | critical | planned | SYNTHETIC | T062 | FS | labor, equipment, supply_chain |  |  |
| T064 | 8.7 | Production Launch | Start of production (SOP) | Formal start-of-production milestone. | BatteryCo | Project Owner | Hungary | Northeast Hungary (synthetic site) | 2027-12-20 | 2027-12-21 | 1 | 0 | USD | critical | planned | SYNTHETIC | T063 | FS |  | True | Start of Production (SOP) |
